# HRM plan

Schedule from MS Project, 2011-09-27 to 2012-05-03, A marks actual dates.

## Calendars

- Standard: Mon-Fri 08:00-12:00, 13:00-17:00; Sat-Sun off. Exceptions (off unless hours are given): 2012-01-16 to 2012-01-30 (Holiday), 2012-04-30 to 2012-05-01 (Holiday).

## Resources

| Resource | Group |
| --- | --- |
| Nhung Huynh | Management |
| Tan Tran | Archiecture |
| Dang Nguyen | Design |
| Tuong Nguyen | Archiecture |
| Tung Nguyen | Testing |
| Nguyen Dinh | Requirement |
| Loc Phan | Design |
| Quyet Nguyen | Requirement |
| Quang Nguyen |  |

## Schedule

| ID | WBS | Task | Type | Duration | Start | Finish | Predecessors | Complete | Remaining | Baseline start | Baseline finish | Baseline duration | Total slack | Constraint | Resources | Work | Actual work |
| --- | --- | --- | --- | --- | --- | --- | --- | --- | --- | --- | --- | --- | --- | --- | --- | --- | --- |
| 1 | 1 | **Human Resource Management** |  | 145d | 2011-09-27 A | 2012-05-03 |  | 27% | 105.7d |  |  |  | 0d |  |  | 6510.8h | 2217.4h |
| 2 | 1.1 | Kick-off meeting |  | 1d | 2011-09-27 A | 2011-09-27 A |  | 100% |  |  |  |  |  | start no earlier than 2011-09-27 | Dang Nguyen; Loc Phan; Nguyen Dinh; Nhung Huynh; Quyet Nguyen; Tan Tran; Tung Nguyen; Tuong Nguyen | 64h | 64h |
| 3 | 1.2 | **Requirement** |  | 63d | 2011-10-01 A | 2011-12-28 | 2 | 66% | 21.63d |  |  |  | 78d |  |  | 3551.8h | 1969.4h |
| 4 | 1.2.1 | **Develop Concept of Operation** |  | 52d | 2011-10-01 A | 2011-12-12 |  | 80% | 10.4d |  |  |  |  |  |  | 2601.4h | 1537.4h |
| 5 | 1.2.1.1 | Elicit requirements |  | 19d | 2011-10-01 A | 2011-10-26 A | 2 | 100% |  |  |  |  |  | start no earlier than 2011-10-01 | Dang Nguyen; Loc Phan; Nguyen Dinh; Nhung Huynh; Quyet Nguyen; Tan Tran; Tung Nguyen; Tuong Nguyen | 27h | 27h |
| 6 | 1.2.1.2 | Analyse requirement | manual | 14d | 2011-10-10 A | 2011-10-27 A |  | 100% |  |  |  |  |  | start no earlier than 2011-10-10 | Dang Nguyen [50%]; Nguyen Dinh [80%]; Quyet Nguyen [80%]; Tan Tran [50%] | 291.2h | 291.2h |
| 7 | 1.2.1.3 | Document ConsOpt( Draft version) | manual | 15d | 2011-10-10 A | 2011-10-28 A |  | 100% |  | 2011-10-28 | 2011-12-11 | 0d |  | start no earlier than 2011-10-10 | Dang Nguyen [50%]; Loc Phan [5%]; Nguyen Dinh [20%]; Nhung Huynh [50%]; Quyet Nguyen [20%]; Tan Tran [5%]; Tung Nguyen [5%]; Tuong Nguyen [5%] | 192h | 192h |
| 8 | 1.2.1.4 | Review |  | 26d | 2011-10-31 A | 2011-12-05 A | 7 | 100% |  |  |  |  |  | finish no earlier than 2011-11-09 | Dang Nguyen [20%]; Loc Phan [20%]; Nguyen Dinh [20%]; Nhung Huynh [20%]; Quyet Nguyen [20%]; Tan Tran; Tung Nguyen [20%]; Tuong Nguyen [20%] | 499.2h | 499.2h |
| 9 | 1.2.1.5 | Update ConsOpt |  | 30d | 2011-10-31 A | 2011-12-11 | 7 | 33% | 20d |  |  |  | 0d | finish no earlier than 2011-12-11 | Dang Nguyen [80%]; Loc Phan [80%]; Nguyen Dinh [80%]; Nhung Huynh [80%]; Quyet Nguyen [80%]; Tan Tran; Tung Nguyen [80%]; Tuong Nguyen [80%] | 1584h | 528h |
| 10 | 1.2.1.6 | Release ConsOpt(Final version) | milestone | 1d | 2011-12-12 | 2011-12-12 | 9 |  |  |  |  |  | 0d |  | Quyet Nguyen | 8h |  |
| 11 | 1.2.2 | **Develop Software Requirement Specification** |  | 43d | 2011-10-31 A | 2011-12-28 | 4 | 41% | 25.38d |  |  |  | 78d |  |  | 950.4h | 432h |
| 12 | 1.2.2.1 | Develop use case specification | manual | 23d | 2011-10-31 | 2011-11-30 | 6 |  |  |  |  |  |  |  | Dang Nguyen [50%]; Nguyen Dinh [50%] | 184h |  |
| 13 | 1.2.2.2 | Develop interfaces |  | 12d | 2011-12-13 | 2011-12-28 | 12 |  |  |  |  |  | 78d |  | Dang Nguyen [20%]; Loc Phan [50%]; Nguyen Dinh [20%]; Nhung Huynh [50%]; Quyet Nguyen [50%]; Tan Tran [50%]; Tung Nguyen [50%]; Tuong Nguyen [50%] | 326.4h |  |
| 14 | 1.2.2.3 | Document SRS (Draft version) | manual | 20d | 2011-11-15 A | 2011-12-12 A |  | 100% |  | 2011-12-05 | 2011-12-12 | 0d |  |  | Dang Nguyen [30%]; Loc Phan [50%]; Nguyen Dinh [30%]; Nhung Huynh [50%]; Quyet Nguyen [50%]; Tung Nguyen [50%] | 416h | 416h |
| 15 | 1.2.2.4 | Review |  | 5d | 2011-12-13 A | 2011-12-19 A | 14 | 100% |  |  |  |  |  |  | Nguyen Dinh; Quyet Nguyen | 16h | 16h |
| 16 | 1.2.2.5 | Release SRS (Final version) | milestone | 1d | 2011-12-20 | 2011-12-20 | 15 |  |  |  |  |  | 84d |  | Nguyen Dinh | 8h |  |
| 17 | 1.3 | **Achitecture** |  | 44d | 2011-10-31 A | 2011-12-29 |  | 38% | 27.31d |  |  |  | 0d |  |  | 740h | 184h |
| 18 | 1.3.1 | **Develop architecture driver document (ADD)** |  | 31d | 2011-10-31 A | 2011-12-12 |  | 71% | 9d |  |  |  | 0d |  |  | 192h | 184h |
| 19 | 1.3.1.1 | Discover architecture drivers | manual | 7d | 2011-10-31 A | 2011-11-08 A | 7 | 100% |  |  |  |  |  |  | Tan Tran; Tuong Nguyen | 24h | 24h |
| 20 | 1.3.1.2 | Document ADD(Draft version) | manual | 10d | 2011-11-09 A | 2011-11-22 A | 19 | 100% |  | 2011-11-22 | 2011-11-26 | 0d |  |  | Tan Tran [50%]; Tuong Nguyen [50%] | 80h | 80h |
| 21 | 1.3.1.3 | Review | manual | 9d | 2011-11-23 | 2011-12-05 | 20 |  |  |  |  |  |  |  |  | 8h |  |
| 22 | 1.3.1.4 | Document ADD(Final version) |  | 5d | 2011-12-06 A | 2011-12-12 A | 21 | 100% |  |  |  |  |  |  | Tan Tran; Tuong Nguyen | 80h | 80h |
| 23 | 1.3.2 | **Develop architecture design** |  | 27d | 2011-11-23 | 2011-12-29 |  |  |  |  |  |  | 0d |  |  | 548h |  |
| 24 | 1.3.2.1 | Design architecture | manual | 14d | 2011-11-23 | 2011-12-12 | 20 |  |  |  |  |  |  |  | Tan Tran; Tuong Nguyen | 224h |  |
| 25 | 1.3.2.2 | Document SAS(Draft version) | manual | 7d | 2011-12-13 | 2011-12-21 | 24 |  |  | 2011-11-21 | 2011-11-22 | 0d |  |  | Dang Nguyen; Loc Phan; Quyet Nguyen; Tan Tran; Tuong Nguyen | 280h |  |
| 26 | 1.3.2.3 | Analysis meeting | manual | 1d | 2011-12-22 | 2011-12-22 | 25 |  |  |  |  |  |  |  | Dang Nguyen; Loc Phan; Nguyen Dinh; Nhung Huynh; Quyet Nguyen; Tan Tran; Tung Nguyen; Tuong Nguyen | 4h |  |
| 27 | 1.3.2.4 | Document SAS v1.0 | manual | 3d | 2011-12-23 | 2011-12-27 | 26 |  |  | 2011-11-27 | 2011-11-29 | 0d |  |  | Tan Tran; Tuong Nguyen | 24h |  |
| 28 | 1.3.2.5 | Review | manual | 1d | 2011-12-28 | 2011-12-28 | 27 |  |  |  |  |  |  |  | Quang Nguyen | 8h |  |
| 29 | 1.3.2.6 | Release final SAS | milestone, manual | 1d | 2011-12-29 | 2011-12-29 | 28 |  |  |  |  |  |  |  | Tan Tran; Tuong Nguyen | 8h |  |

| ID | WBS | Task | Type | Duration | Start | Finish | Predecessors | Baseline start | Baseline finish | Baseline duration | Total slack | Resources | Work |
| --- | --- | --- | --- | --- | --- | --- | --- | --- | --- | --- | --- | --- | --- |
| 30 | 1.4 | **Detail Design** |  | 21d | 2011-12-13 | 2012-01-10 |  |  |  |  | 0d |  | 171h |
| 31 | 1.4.1 | **Analysis** |  | 18d | 2011-12-13 | 2012-01-05 |  |  |  |  | 0d |  | 160h |
| 32 | 1.4.1.1 | Design class diagram | manual | 14d | 2011-12-13 | 2011-12-30 | 24 |  |  |  |  |  | 80h |
| 33 | 1.4.1.2 | Design sequence diagram | manual | 14d | 2011-12-19 | 2012-01-05 |  |  |  |  |  |  | 80h |
| 34 | 1.4.2 | Release document SDS(Draft version) | manual | 1d | 2012-01-06 | 2012-01-06 | 33 |  |  |  |  |  | 3h |
| 35 | 1.4.3 | Review | manual | 1d | 2012-01-09 | 2012-01-09 | 34 | 2012-01-09 | 2011-12-16 | 0d |  |  | 4h |
| 36 | 1.4.4 | Release document SDS(Final version) | milestone, manual | 1d | 2012-01-10 | 2012-01-10 | 35 |  |  |  |  |  | 4h |
| 37 | 1.5 | **Programming** |  | 67d | 2011-11-28 | 2012-03-14 |  |  |  |  | 0d |  | 1152h |
| 38 | 1.5.1 | Programming "Manage Catalog" | manual | 14d | 2011-11-28 | 2011-12-15 |  |  |  |  |  | Tan Tran | 80h |
| 39 | 1.5.2 | Programming "Manage Detail Information" | manual | 5d | 2012-01-06 | 2012-01-12 | 33 |  |  |  |  | Dang Nguyen | 36h |
| 40 | 1.5.3 | Programming "Manage Trainning" | manual | 14d | 2012-01-06 | 2012-02-09 | 33 |  |  |  |  | Nhung Huynh | 100h |
| 41 | 1.5.4 | Programming "Manage Personal History" | manual | 5d | 2012-01-06 | 2012-01-12 | 33 |  |  |  |  | Loc Phan | 36h |
| 42 | 1.5.5 | Programming "Manage Profile" |  | 24d | 2012-01-06 | 2012-02-23 | 33 |  |  |  | 0d | Tan Tran | 192h |
| 43 | 1.5.6 | Programming "Manage Reward" | manual | 7d | 2012-01-06 | 2012-01-31 | 33 |  |  |  |  | Tuong Nguyen | 50h |
| 44 | 1.5.7 | Programming "Manage Penalty" | manual | 7d | 2012-01-06 | 2012-01-31 | 33 |  |  |  |  | Tuong Nguyen | 50h |
| 45 | 1.5.8 | Programming "Manage Task" | manual | 14d | 2012-01-06 | 2012-02-09 | 33 |  |  |  |  | Quyet Nguyen | 80h |
| 46 | 1.5.9 | Programming "Manage Probation" | manual | 7d | 2012-02-10 | 2012-02-20 | 40 |  |  |  |  | Nhung Huynh | 50h |
| 47 | 1.5.10 | Programming "Manage Supported People" | manual | 7d | 2012-01-06 | 2012-01-31 | 33 |  |  |  |  | Nguyen Dinh | 50h |
| 48 | 1.5.11 | Programming "Manage Position" | milestone, manual | 7d | 2012-02-24 | 2012-03-05 | 42 |  |  |  |  | Tan Tran | 50h |
| 49 | 1.5.12 | Programming "Manage Facilities" | manual | 7d | 2012-01-13 | 2012-02-07 | 39 |  |  |  |  | Dang Nguyen | 50h |
| 50 | 1.5.13 | Programming "Manage Wage Progress" | manual | 14d | 2012-01-13 | 2012-02-16 | 41 |  |  |  |  | Loc Phan | 80h |
| 51 | 1.5.14 | Conduct Unit testing | manual | 30d | 2012-01-06 | 2012-03-02 | 33 |  |  |  |  | Dang Nguyen; Loc Phan; Nguyen Dinh; Nhung Huynh; Quang Nguyen; Quyet Nguyen; Tan Tran; Tung Nguyen; Tuong Nguyen | 80h |
| 52 | 1.5.15 | Intergration | manual | 7d | 2012-03-06 | 2012-03-14 | 48 |  |  |  |  | Dang Nguyen; Loc Phan; Tan Tran | 168h |
| 53 | 1.6 | **Testing** |  | 71d | 2011-12-06 | 2012-03-28 |  |  |  |  | 0d |  | 252h |
| 54 | 1.6.1 | **Design test case** |  | 30d | 2011-12-06 | 2012-01-31 |  |  |  |  | 0d |  | 92h |
| 55 | 1.6.1.1 | Acceptance test case | manual | 7d | 2011-12-06 | 2011-12-14 | 14 |  |  |  |  | Quyet Nguyen; Tung Nguyen | 16h |
| 56 | 1.6.1.2 | System test case | manual | 7d | 2011-12-22 | 2011-12-30 | 25 |  |  |  |  | Tan Tran; Tung Nguyen | 45h |
| 57 | 1.6.1.3 | Integration test case | manual | 7d | 2012-01-02 | 2012-01-10 | 56 |  |  |  |  | Dang Nguyen; Tung Nguyen | 10h |
| 58 | 1.6.1.4 | Unit test case | manual | 7d | 2012-01-06 | 2012-01-31 | 32 |  |  |  |  | Loc Phan; Tung Nguyen | 21h |
| 59 | 1.6.2 | Conduct integration test |  | 2d | 2012-03-15 | 2012-03-16 | 52 |  |  |  | 0d | Nhung Huynh; Tung Nguyen | 32h |
| 60 | 1.6.3 | Conduct system test |  | 5d | 2012-03-19 | 2012-03-23 | 59 |  |  |  | 0d | Nhung Huynh; Tung Nguyen | 80h |
| 61 | 1.6.4 | Conduct acceptance test |  | 3d | 2012-03-26 | 2012-03-28 | 60 |  |  |  | 0d | Nhung Huynh; Tung Nguyen | 48h |
| 62 | 1.7 | Rework | manual | 15d | 2012-03-29 | 2012-04-18 | 53 |  |  |  |  | Dang Nguyen; Loc Phan; Nguyen Dinh; Nhung Huynh; Quyet Nguyen; Tan Tran; Tung Nguyen; Tuong Nguyen | 120h |
| 63 | 1.8 | Deployment | manual | 1d | 2012-04-19 | 2012-04-19 | 62 |  |  |  |  |  | 8h |
| 64 | 1.9 | Deliver to customer | manual | 1d | 2012-04-20 | 2012-04-20 | 63 |  |  |  |  |  | 4h |
| 65 | 1.10 | Maintaining | manual | 7d | 2012-04-23 | 2012-05-03 | 64 |  |  |  |  | Dang Nguyen; Loc Phan; Nguyen Dinh; Nhung Huynh; Quyet Nguyen; Tan Tran; Tung Nguyen; Tuong Nguyen | 448h |
