# HRM Detail Plan

Schedule from MS Project, 2011-09-27 to 2012-05-25, status date 2012-03-09.

## Calendars

- HRM_hk1.0: Mon off; Tue 08:00-11:00, 13:00-16:00, 19:00-21:00; Wed 13:00-15:30, 19:00-21:00; Thu 08:00-11:00, 13:00-16:00, 19:00-21:00; Fri 13:00-17:00, 19:00-21:00; Sat 08:00-11:00, 13:00-15:30, 19:00-21:00; Sun off.
- HRM_hk2.0: Mon 19:00-21:00; Tue-Wed 08:00-11:00, 13:00-16:00, 19:00-21:00; Thu 19:00-21:00; Fri-Sat 08:00-11:00, 13:00-16:00, 19:00-21:00; Sun off.

## Resources

| Resource |
| --- |
| Nhung |
| Quyet |
| Nguyen |
| Loc |
| Dang |
| Tung |
| Tuong |
| Tan |

## Schedule

| ID | WBS | Task | Duration | Start | Finish | Predecessors | Baseline start | Baseline finish | Baseline duration | Baseline 1 start | Baseline 1 finish | Total slack | Free slack | Constraint | Resources | Work |
| --- | --- | --- | --- | --- | --- | --- | --- | --- | --- | --- | --- | --- | --- | --- | --- | --- |
| 1 | 1 | **Human Resource Management** | 147.06d? | 2011-09-27 08:00 | 2012-05-25 09:00 |  | 2011-09-22 08:00 | 2012-04-30 17:00 | 222d? | 2011-09-26 08:00 | 2012-04-30 17:00 | 0d |  |  |  | 4337.71h |
| 2 | 1.1 | Kick off meeting | 1d | 2011-09-27 08:00 | 2011-09-28 15:00 |  |  |  |  | 2011-09-27 08:00 | 2011-09-27 08:00 | 0.38d | 0d | start no earlier than 2011-09-27 08:00 | Dang; Loc; Nguyen; Nhung; Quyet; Tan; Tung; Tuong | 64h |
| 3 | 1.2 | **Start Up** | 2.75d? | 2011-09-28 15:00 | 2011-10-01 15:30 | 2 | 2011-09-22 08:00 | 2012-04-17 17:00 | 209d? | 2011-09-28 08:00 | 2011-09-30 17:00 | 0.62d | 0.25d |  |  | 118h |
| 4 | 1.2.1 | **Research process** | 1.5d | 2011-09-28 15:00 | 2011-09-30 14:30 | 2 | 2011-10-01 08:00 | 2012-03-22 17:00 | 174d | 2011-09-28 08:00 | 2011-09-29 17:00 | 0.62d |  |  |  | 58h |
| 5 | 1.2.1.1 | **Requirement Process** | 1.5d | 2011-09-28 15:00 | 2011-09-30 14:30 | 2 |  |  |  | 2011-09-28 08:00 | 2011-09-29 17:00 | 0.62d | 0d |  |  | 16h |
| 6 | 1.2.1.1.1 | Research phases in process | 1d | 2011-09-28 15:00 | 2011-09-30 14:30 | 2 |  |  |  |  |  | 0.62d | 0d |  | Nguyen | 8h |
| 7 | 1.2.1.1.2 | Research tool and document templates | 1d | 2011-09-28 15:00 | 2011-09-30 14:30 | 2 |  |  |  |  |  | 0.62d | 0d |  | Quyet | 8h |
| 8 | 1.2.1.2 | **Architect process** | 1.5d | 2011-09-28 15:00 | 2011-09-30 14:30 | 2 |  |  |  | 2011-09-28 08:00 | 2011-09-29 17:00 | 0.62d | 0d |  |  | 16h |
| 9 | 1.2.1.2.1 | Research phases in process | 1d | 2011-09-28 15:00 | 2011-09-30 14:30 | 2 |  |  |  |  |  | 0.62d | 0d |  | Tuong | 8h |
| 10 | 1.2.1.2.2 | Research tool and document templates | 1d | 2011-09-28 15:00 | 2011-09-30 14:30 | 2 |  |  |  |  |  | 0.62d | 0d |  | Tan | 8h |
| 11 | 1.2.1.3 | **Detail design process** | 1.5d | 2011-09-28 15:00 | 2011-09-30 14:30 | 2 |  |  |  | 2011-09-28 08:00 | 2011-09-29 17:00 | 0.62d | 0d |  |  | 16h |
| 12 | 1.2.1.3.1 | Research phases in process | 1d | 2011-09-28 15:00 | 2011-09-30 14:30 | 2 |  |  |  |  |  | 0.62d | 0d |  | Dang | 8h |
| 13 | 1.2.1.3.2 | Research tool and document templates | 1d | 2011-09-28 15:00 | 2011-09-30 14:30 | 2 |  |  |  |  |  | 0.62d | 0d |  | Loc | 8h |
| 14 | 1.2.1.4 | Testing process | 1d | 2011-09-28 15:00 | 2011-09-30 14:30 | 2 |  |  |  | 2011-09-28 08:00 | 2011-09-28 17:00 | 0.62d | 0d |  | Tung | 4h |
| 15 | 1.2.1.5 | Research Process Management: Risk, Measure, Change | 1d | 2011-09-28 15:00 | 2011-09-30 14:30 | 2 |  |  |  | 2011-09-28 08:00 | 2011-09-28 17:00 | 0.62d | 0d |  | Nhung | 6h |
| 16 | 1.2.2 | **Develop Project Plan** | 1.25d? | 2011-09-30 14:30 | 2011-10-01 15:30 | 5, 8, 11, 14, 15 | 2011-09-22 08:00 | 2011-09-26 17:00 | 5d | 2011-09-28 08:00 | 2011-09-29 17:00 | 0.62d |  |  |  | 60h |
| 17 | 1.2.2.1 | **Requirement Process** | 1.25d | 2011-09-30 14:30 | 2011-10-01 15:30 | 5 |  |  |  | 2011-09-28 08:00 | 2011-09-29 17:00 | 0.62d |  |  |  | 16h |
| 18 | 1.2.2.1.1 | Draw process | 1d | 2011-09-30 14:30 | 2011-10-01 15:30 | 7 |  |  |  |  |  | 0.62d |  |  | Quyet | 8h |
| 19 | 1.2.2.1.2 | Describe stage in process | 1d | 2011-09-30 14:30 | 2011-10-01 15:30 | 6 |  |  |  |  |  | 0.62d |  |  | Nguyen | 8h |
| 20 | 1.2.2.2 | **Architect process** | 1.25d | 2011-09-30 14:30 | 2011-10-01 15:30 | 8 |  |  |  | 2011-09-28 08:00 | 2011-09-29 17:00 | 0.62d |  |  |  | 16h |
| 21 | 1.2.2.2.1 | Draw process | 1d | 2011-09-30 14:30 | 2011-10-01 15:30 | 9 |  |  |  |  |  | 0.62d |  |  | Tuong | 8h |
| 22 | 1.2.2.2.2 | Describe stage in process | 1d | 2011-09-30 14:30 | 2011-10-01 15:30 | 10 |  |  |  |  |  | 0.62d |  |  | Tan | 8h |
| 23 | 1.2.2.3 | **Detail design process** | 1.25d | 2011-09-30 14:30 | 2011-10-01 15:30 | 11 |  |  |  | 2011-09-28 08:00 | 2011-09-29 17:00 | 0.62d |  |  |  | 16h |
| 24 | 1.2.2.3.1 | Draw process | 1d | 2011-09-30 14:30 | 2011-10-01 15:30 | 13 |  |  |  |  |  | 0.62d |  |  | Loc | 8h |
| 25 | 1.2.2.3.2 | Describe stage in process | 1d | 2011-09-30 14:30 | 2011-10-01 15:30 | 12 |  |  |  |  |  | 0.62d |  |  | Dang | 8h |
| 26 | 1.2.2.4 | Testing process | 1d | 2011-09-30 14:30 | 2011-10-01 15:30 | 14 |  |  |  | 2011-09-28 08:00 | 2011-09-28 17:00 | 0.62d |  |  | Tung | 4h |
| 27 | 1.2.2.5 | Doc Process Management: Risk, Measurement, Change | 1d? | 2011-09-30 14:30 | 2011-10-01 15:30 | 15 |  |  |  | 2011-09-28 08:00 | 2011-09-28 17:00 | 0.62d |  |  | Nhung | 8h |

| ID | WBS | Task | Duration | Start | Finish | Predecessors | Baseline start | Baseline finish | Baseline duration | Baseline 1 start | Baseline 1 finish | Total slack | Free slack | Resources | Work |
| --- | --- | --- | --- | --- | --- | --- | --- | --- | --- | --- | --- | --- | --- | --- | --- |
| 28 | 1.3 | **Requirement Analysis** | 68.56d? | 2011-10-04 08:00 | 2012-01-24 14:30 | 3 | 2011-10-01 08:00 | 2011-11-20 17:00 | 51d? | 2011-10-01 08:00 | 2011-12-29 17:00 | 0.38d | 0d |  | 1397.5h |
| 29 | 1.3.1 | **Conference with cus 1** | 2.31d? | 2011-10-04 08:00 | 2011-10-06 16:00 | 3 |  |  |  |  |  | 0.38d |  |  | 57h |
| 30 | 1.3.1.1 | **Prepare 1** | 0.38d? | 2011-10-04 08:00 | 2011-10-04 11:00 | 3 |  |  |  |  |  | 0.38d | 0d |  | 7h |
| 31 | 1.3.1.1.1 | C1: Research HRM processes | 0.25d? | 2011-10-04 08:00 | 2011-10-04 10:00 | 3 |  |  |  |  |  | 0.38d | 0d | Nguyen | 2h |
| 32 | 1.3.1.1.2 | C1: Research business, role | 0.25d? | 2011-10-04 08:00 | 2011-10-04 10:00 | 3 |  |  |  |  |  | 0.38d | 0d | Quyet | 2h |
| 33 | 1.3.1.1.3 | C1: Prepare questions to ask customer | 0.25d? | 2011-10-04 08:00 | 2011-10-04 10:00 | 3 |  |  |  |  |  | 0.38d | 0d | Loc | 2h |
| 34 | 1.3.1.1.4 | C1: Send mail for customer | 0.12d? | 2011-10-04 10:00 | 2011-10-04 11:00 | 31, 32, 33 |  |  |  |  |  | 0.38d |  | Nhung | 1h |
| 35 | 1.3.1.2 | **Elicitate requirement 1** | 0.69d? | 2011-10-04 13:00 | 2011-10-05 13:30 | 30 | 2011-10-01 08:00 | 2011-11-12 17:00 | 43d | 2011-10-01 08:00 | 2011-12-25 17:00 | 0.62d | 0d |  | 28h |
| 36 | 1.3.1.2.1 | C1: Write down meeting 1 | 0.44d? | 2011-10-04 13:00 | 2011-10-05 13:30 | 30 |  |  |  |  |  | 0.62d |  | Tung | 3.5h |
| 37 | 1.3.1.2.2 | C1: Support write down meeting 1 | 0.44d? | 2011-10-04 13:00 | 2011-10-05 13:30 | 30 |  |  |  |  |  | 0.62d |  | Tuong | 3.5h |
| 38 | 1.3.1.2.3 | C1: Manage meeting 1 | 0.44d? | 2011-10-04 13:00 | 2011-10-05 13:30 | 30 |  |  |  |  |  | 0.62d |  | Nguyen | 3.5h |
| 39 | 1.3.1.2.4 | C1: Attending conference 1 | 0.44d? | 2011-10-04 13:00 | 2011-10-05 13:30 | 30 |  |  |  |  |  | 0.62d |  | Dang; Loc; Nhung; Quyet; Tan | 17.5h |
| 40 | 1.3.1.3 | **Analyze requirement 1** | 1.25d? | 2011-10-05 13:30 | 2011-10-06 16:00 | 35 | 2011-11-20 17:00 | 2011-11-20 17:00 | 0d? | 2011-10-01 08:00 | 2011-12-25 17:00 | 0.62d | 0.25d |  | 22h |
| 41 | 1.3.1.3.1 | C1: Doc ConsOpt: Introduction | 0.25d? | 2011-10-05 13:30 | 2011-10-05 15:30 | 35 |  |  |  |  |  | 1.62d |  | Loc | 2h |
| 42 | 1.3.1.3.2 | C1: Doc ConsOpt: Current System & Reason for improvement | 0.25d | 2011-10-05 13:30 | 2011-10-05 15:30 | 35 |  |  |  |  |  | 1.62d |  | Dang | 2h |
| 43 | 1.3.1.3.3 | C1: Doc Qui trinh nghiep vu tong quat | 1d | 2011-10-05 13:30 | 2011-10-06 16:00 | 35 |  |  |  |  |  | 0.62d |  | Nhung | 8h |
| 44 | 1.3.1.3.4 | C1: Guide doc Concept | 1d? | 2011-10-05 13:30 | 2011-10-06 16:00 | 35 |  |  |  |  |  | 0.62d |  | Nguyen | 2h |
| 45 | 1.3.1.3.5 | C1: Review document | 1d | 2011-10-05 13:30 | 2011-10-06 16:00 | 35 |  |  |  |  |  | 0.62d |  | Nguyen | 4h |
| 46 | 1.3.1.3.6 | C1: Fix error in document | 1d | 2011-10-05 13:30 | 2011-10-06 16:00 | 35 |  |  |  |  |  | 0.62d |  | Quyet | 4h |
| 47 | 1.3.2 | **Conference with cus 2** | 13.5d? | 2011-10-05 13:30 | 2011-10-27 10:00 | 30 |  |  |  |  |  | 0.38d |  |  | 165h |
| 48 | 1.3.2.1 | **Prepare 2** | 0.62d? | 2011-10-05 13:30 | 2011-10-06 09:00 | 30, 35 |  |  |  |  |  | 1.25d | 0.88d |  | 5h |
| 49 | 1.3.2.1.1 | C2: Đọc và phân tích biểu mẫu Sơ yếu lí lịch | 0.25d? | 2011-10-05 13:30 | 2011-10-05 15:30 | 30 |  |  |  |  |  | 1.5d | 0.25d | Quyet | 2h |
| 50 | 1.3.2.1.2 | C2: Thu thập và chuẩn bị các câu hỏi về Tuyển dụng và làm mới HSNS | 0.25d? | 2011-10-05 13:30 | 2011-10-05 15:30 | 30 |  |  |  |  |  | 1.5d | 0.25d | Nguyen | 2h |
| 51 | 1.3.2.1.3 | C2: Send mail for customer | 0.12d? | 2011-10-06 08:00 | 2011-10-06 09:00 | 49, 50 |  |  |  |  |  | 1.25d |  | Nhung | 1h |

| ID | WBS | Task | Type | Duration | Start | Finish | Predecessors | Baseline 1 start | Baseline 1 finish | Total slack | Free slack | Constraint | Resources | Work |
| --- | --- | --- | --- | --- | --- | --- | --- | --- | --- | --- | --- | --- | --- | --- |
| 52 | 1.3.2.2 | **Elicitate Requirement 2** |  | 0.5d? | 2011-10-07 13:00 | 2011-10-07 17:00 | 48, 40 |  |  | 0.38d | 0.25d |  |  | 32h |
| 53 | 1.3.2.2.1 | C2: Write down meeting 2 |  | 0.5d? | 2011-10-07 13:00 | 2011-10-07 17:00 | 48 |  |  | 0.38d |  |  | Dang | 4h |
| 54 | 1.3.2.2.2 | C2: Support write down meeting 2 |  | 0.5d? | 2011-10-07 13:00 | 2011-10-07 17:00 | 48 |  |  | 0.38d |  |  | Loc | 4h |
| 55 | 1.3.2.2.3 | C2: Manage meeting 2 |  | 0.5d? | 2011-10-07 13:00 | 2011-10-07 17:00 | 48 |  |  | 0.38d |  |  | Quyet | 4h |
| 56 | 1.3.2.2.4 | C2: Attending conference 2 |  | 0.5d? | 2011-10-07 13:00 | 2011-10-07 17:00 |  |  |  | 0.38d |  |  | Nguyen; Nhung; Tan; Tung; Tuong | 20h |
| 57 | 1.3.2.3 | **Analyze requirement** |  | 11.25d | 2011-10-08 08:00 | 2011-10-27 10:00 | 52 |  |  | 0.38d | 0d |  |  | 128h |
| 58 | 1.3.2.3.1 | C2: Doc Mô hình phân rã chức năng HSNS |  | 4d | 2011-10-08 08:00 | 2011-10-18 10:30 | 52 |  |  | 0.38d | 0d |  | Dang | 32h |
| 59 | 1.3.2.3.2 | C2: Draw process qui trinh nghiep vu tong quat |  | 2d | 2011-10-08 08:00 | 2011-10-13 10:00 | 52 |  |  | 0.38d | 0d |  | Nhung | 16h |
| 60 | 1.3.2.3.3 | C2: Phân tích hệ thống dự kiến |  | 4d | 2011-10-08 08:00 | 2011-10-18 10:30 | 52 |  |  | 0.38d | 0d |  | Nguyen | 32h |
| 61 | 1.3.2.3.4 | C2: Doc Information Catalog: Thông tin chung |  | 2d | 2011-10-13 10:00 | 2011-10-18 10:30 | 59 |  |  | 0.38d | 0d |  | Nhung | 16h |
| 62 | 1.3.2.3.5 | C2: Review document |  | 2d | 2011-10-18 10:30 | 2011-10-21 17:00 | 58, 59, 60, 61 |  |  | 0.38d | 0.25d |  | Nguyen | 16h |
| 63 | 1.3.2.3.6 | C2: Fix error in document |  | 2d | 2011-10-22 08:00 | 2011-10-27 10:00 | 62 |  |  | 0.38d |  |  | Quyet | 16h |
| 64 | 1.3.3 | **Conference with cus 3** |  | 9.38d? | 2011-10-27 10:00 | 2011-11-11 14:00 |  |  |  | 0.38d | 0.25d |  |  | 193h |
| 65 | 1.3.3.1 | **Prepare 3** |  | 1.62d? | 2011-10-27 10:00 | 2011-10-29 09:00 | 48, 52, 57 |  |  | 0.38d | 0d |  |  | 25h |
| 66 | 1.3.3.1.1 | C3: Research HRM processes |  | 1d? | 2011-10-27 10:00 | 2011-10-28 17:00 |  |  |  | 0.38d | 0.25d |  | Nguyen | 8h |
| 67 | 1.3.3.1.2 | C3: Research business, role |  | 1d? | 2011-10-27 10:00 | 2011-10-28 17:00 |  |  |  | 0.38d | 0.25d |  | Loc | 8h |
| 68 | 1.3.3.1.3 | C3: Prepare questions to ask customer |  | 1d? | 2011-10-27 10:00 | 2011-10-28 17:00 |  |  |  | 0.38d | 0.25d |  | Quyet | 8h |
| 69 | 1.3.3.1.4 | C3: Send mail for customer |  | 0.12d? | 2011-10-29 08:00 | 2011-10-29 09:00 | 66, 67, 68 |  |  | 0.38d |  |  | Nhung | 1h |
| 70 | 1.3.3.2 | **Elicitate Requirement 3** |  | 0.5d? | 2011-10-29 09:00 | 2011-10-29 15:00 | 65, 57 |  |  | 0.38d | 0d |  |  | 32h |
| 71 | 1.3.3.2.1 | C3: Write down meeting 3 |  | 0.5d? | 2011-10-29 09:00 | 2011-10-29 15:00 |  |  |  | 0.38d |  |  | Nhung | 4h |
| 72 | 1.3.3.2.2 | C3: Support write down meeting 3 |  | 0.5d? | 2011-10-29 09:00 | 2011-10-29 15:00 |  |  |  | 0.38d |  |  | Tan | 4h |
| 73 | 1.3.3.2.3 | C3: Manage meeting 3 |  | 0.5d? | 2011-10-29 09:00 | 2011-10-29 15:00 |  |  |  | 0.38d |  |  | Nguyen | 4h |
| 74 | 1.3.3.2.4 | C3: Attending conference 3 |  | 0.5d? | 2011-10-29 09:00 | 2011-10-29 15:00 |  |  |  | 0.38d |  |  | Dang; Loc; Quyet; Tung; Tuong | 20h |
| 75 | 1.3.3.3 | **Analyze requirement** |  | 7.25d | 2011-10-29 15:00 | 2011-11-11 14:00 | 70 |  |  | 0.38d |  |  |  | 136h |
| 76 | 1.3.3.3.1 | C3: Doc Information Category: Thông tin mở rộng |  | 2d | 2011-10-29 15:00 | 2011-11-04 14:00 |  |  |  | 0.38d | 0d |  | Nhung | 16h |
| 77 | 1.3.3.3.2 | C3: Doc Mo hinh phan ra chuc nang HSNS |  | 4d | 2011-10-29 15:00 | 2011-11-09 14:30 |  |  |  | 0.62d | 0d |  | Dang | 32h |
| 78 | 1.3.3.3.3 | C3: Scenerio |  | 4d | 2011-10-29 15:00 | 2011-11-09 14:30 |  |  |  | 0.62d | 0d |  | Tung | 32h |
| 79 | 1.3.3.3.4 | C3: Processes |  | 2d | 2011-11-04 14:00 | 2011-11-09 14:30 | 76 |  |  | 0.62d | 0d |  | Nhung | 16h |
| 80 | 1.3.3.3.5 | C3: Effect |  | 4d | 2011-10-29 15:00 | 2011-11-09 14:30 |  |  |  | 0.62d | 0d |  | Loc | 32h |
| 81 | 1.3.3.3.6 | C3: Review document |  | 0.5d | 2011-11-09 14:30 | 2011-11-10 11:00 | 76, 77, 78, 79, 80 |  |  | 0.38d | 0d |  | Nguyen | 4h |
| 82 | 1.3.3.3.7 | C3: Fix error in document |  | 0.5d | 2011-11-10 13:00 | 2011-11-11 14:00 | 81 |  |  | 0.38d | 0d |  | Quyet | 4h |
| 83 | 1.3.4 | Send Concept Operation to customer | milestone | 0.25d | 2011-11-11 14:00 | 2011-11-11 16:00 | 77, 78, 79, 80, 81, 82 | 2011-11-10 08:00 | 2011-11-10 08:00 | 0.62d | 0d | start no earlier than 2011-11-10 08:00 | Nhung | 2h |
| 84 | 1.3.5 | C3: Update Information Category |  | 26d | 2011-11-11 16:00 | 2012-01-12 09:00 | 83 |  |  | 0.38d | 0d |  | Quyet | 202h |
| 85 | 1.3.6 | C3: Update Process |  | 26d | 2011-11-11 16:00 | 2012-01-12 09:00 | 83 |  |  | 0.38d | 0d |  | Nhung | 206h |
| 86 | 1.3.7 | C3: Review and fix Concept |  | 26d | 2011-11-11 16:00 | 2012-01-12 09:00 | 83 |  |  | 0.38d | 0d |  | Nguyen | 206h |

| ID | WBS | Task | Duration | Start | Finish | Predecessors | Baseline start | Baseline finish | Baseline duration | Baseline 1 start | Baseline 1 finish | Total slack | Free slack | Resources | Work |
| --- | --- | --- | --- | --- | --- | --- | --- | --- | --- | --- | --- | --- | --- | --- | --- |
| 87 | 1.3.8 | **Conference with cus 4 (review)** | 6.12d? | 2012-01-12 09:00 | 2012-01-21 10:00 | 83, 70, 64, 84, 85, 86 |  |  |  |  |  | 0.38d | 0d |  | 83h |
| 88 | 1.3.8.1 | **Prepare 4** | 1.12d? | 2012-01-12 09:00 | 2012-01-13 15:00 | 70, 64 |  |  |  |  |  | 0.38d | 0d |  | 19h |
| 89 | 1.3.8.1.1 | C4: Research HRM processes | 0.75d? | 2012-01-12 09:00 | 2012-01-13 14:00 |  |  |  |  |  |  | 0.38d | 0d | Nguyen | 6h |
| 90 | 1.3.8.1.2 | C4: Research business, role | 0.75d? | 2012-01-12 09:00 | 2012-01-13 14:00 |  |  |  |  |  |  | 0.38d | 0d | Loc | 6h |
| 91 | 1.3.8.1.3 | C4: Prepare questions to ask customer | 0.75d? | 2012-01-12 09:00 | 2012-01-13 14:00 |  |  |  |  |  |  | 0.38d | 0d | Quyet | 6h |
| 92 | 1.3.8.1.4 | C4: Send mail for customer | 0.12d? | 2012-01-13 14:00 | 2012-01-13 15:00 | 89, 90, 91 |  |  |  |  |  | 0.62d |  | Nhung | 1h |
| 93 | 1.3.8.2 | **Elicitate Requirement 4** | 0.75d? | 2012-01-13 15:00 | 2012-01-14 10:00 | 88, 83, 75 |  |  |  |  |  | 0.38d | 0d |  | 32h |
| 94 | 1.3.8.2.1 | C4: Write down meeting 4 | 0.5d? | 2012-01-13 15:00 | 2012-01-14 10:00 |  |  |  |  |  |  | 0.38d |  | Loc | 4h |
| 95 | 1.3.8.2.2 | C4: Support write down meeting 4 | 0.5d? | 2012-01-13 15:00 | 2012-01-14 10:00 |  |  |  |  |  |  | 0.38d |  | Quyet | 4h |
| 96 | 1.3.8.2.3 | C4: Manage meeting 4 | 0.5d? | 2012-01-13 15:00 | 2012-01-14 10:00 |  |  |  |  |  |  | 0.38d |  | Nguyen | 4h |
| 97 | 1.3.8.2.4 | C4: Attending conference 4 | 0.5d? | 2012-01-13 15:00 | 2012-01-14 10:00 |  |  |  |  |  |  | 0.38d |  | Dang; Nhung; Tan; Tung; Tuong | 20h |
| 98 | 1.3.8.3 | **Analyze requirement** | 4.25d? | 2012-01-14 10:00 | 2012-01-21 10:00 | 93 |  |  |  |  |  | 0.38d |  |  | 32h |
| 99 | 1.3.8.3.1 | Update Information Catgegories | 1d? | 2012-01-14 10:00 | 2012-01-17 14:30 |  |  |  |  |  |  | 0.38d | 0d | Nhung | 8h |
| 100 | 1.3.8.3.2 | Update Processes | 1d? | 2012-01-14 10:00 | 2012-01-17 14:30 |  |  |  |  |  |  | 0.38d | 0d | Quyet | 8h |
| 101 | 1.3.8.3.3 | C4: Review document | 1d? | 2012-01-17 14:30 | 2012-01-19 14:00 | 99, 100 |  |  |  |  |  | 0.62d | 0d | Nguyen | 8h |
| 102 | 1.3.8.3.4 | C4: Fix error in document | 1d? | 2012-01-19 14:00 | 2012-01-21 10:00 | 101 |  |  |  |  |  | 0.38d |  | Quyet | 8h |
| 103 | 1.3.9 | Update Plan | 1d | 2012-01-21 10:00 | 2012-01-24 14:30 | 87 |  |  |  |  |  | 0.38d | 0d | Nhung | 8h |
| 104 | 1.3.10 | **Develop SRS** | 40.31d | 2011-11-11 16:00 | 2012-01-17 17:00 | 64, 83 | 2011-10-23 08:00 | 2011-11-20 17:00 | 29d | 2011-10-01 08:00 | 2011-10-04 10:40 | 4.69d | 4.06d |  | 275.5h |
| 105 | 1.3.10.1 | **Document Software Requirement Specification (Draft version)** | 5d | 2011-11-11 16:00 | 2011-11-19 11:45 |  |  |  |  | 2011-10-01 08:00 | 2011-10-03 12:00 | 13.75d |  |  | 79h |
| 106 | 1.3.10.1.1 | **Develop use case specification** | 3.5d | 2011-11-11 16:00 | 2011-11-17 15:00 |  |  |  |  | 2011-10-01 08:00 | 2011-10-03 12:00 | 15.25d | 1.5d |  | 60h |
| 107 | 1.3.10.1.1.1 | Draw use cases | 2.5d | 2011-11-11 16:00 | 2011-11-17 15:00 |  |  |  |  |  |  | 15.25d | 1.5d | Dang | 20h |
| 108 | 1.3.10.1.1.2 | Draw activity diagram for use cases | 2.5d | 2011-11-11 16:00 | 2011-11-17 15:00 |  |  |  |  |  |  | 15.25d | 1.5d | Loc | 20h |
| 109 | 1.3.10.1.1.3 | Descripe use case | 2.5d | 2011-11-11 16:00 | 2011-11-17 15:00 |  |  |  |  |  |  | 15.25d | 1.5d | Tung | 20h |
| 110 | 1.3.10.1.2 | Monitoring tasks in SRS | 2.62d | 2011-11-11 16:00 | 2011-11-17 16:00 |  |  |  |  |  |  | 15.12d | 1.38d | Quyet | 10h |
| 111 | 1.3.10.1.3 | Review SRS | 5.59d | 2011-11-11 16:00 | 2011-11-19 11:45 |  |  |  |  |  |  | 13.75d | 0d | Nguyen | 9h |
| 112 | 1.3.10.2 | Review | 0.5d | 2011-11-19 13:00 | 2011-11-22 09:30 | 106, 111, 107, 108, 109, 110 |  |  |  | 2011-10-01 08:00 | 2011-10-01 17:00 | 13.75d | 0d | Dang; Loc; Nguyen; Quyet; Tan; Tung; Tuong | 28h |

| ID | WBS | Task | Duration | Start | Finish | Predecessors | Baseline start | Baseline finish | Baseline duration | Baseline 1 start | Baseline 1 finish | Total slack | Free slack | Constraint | Calendar | Resources | Work |
| --- | --- | --- | --- | --- | --- | --- | --- | --- | --- | --- | --- | --- | --- | --- | --- | --- | --- |
| 113 | 1.3.10.3 | **Update SRS** | 5.75d | 2011-11-22 09:30 | 2011-12-01 09:00 | 112 |  |  |  |  |  | 13.75d | 0d |  |  |  | 56.5h |
| 114 | 1.3.10.3.1 | Update use case | 2d | 2011-11-22 09:30 | 2011-11-25 16:00 |  |  |  |  |  |  | 13.75d | 0d |  |  | Loc | 16h |
| 115 | 1.3.10.3.2 | Bussiness Rule | 2d | 2011-11-25 16:00 | 2011-12-01 09:00 | 114 |  |  |  |  |  | 13.75d |  |  |  | Loc | 16h |
| 116 | 1.3.10.3.3 | Functional Requirement | 2d | 2011-11-22 09:30 | 2011-11-25 16:00 |  |  |  |  |  |  | 16.5d |  |  |  | Quyet | 10.5h |
| 117 | 1.3.10.3.4 | Software Requirement Specification (Final version) | 2d | 2011-11-22 09:30 | 2011-11-25 16:00 |  |  |  |  |  |  | 16.5d |  | finish no earlier than 2011-11-01 17:00 |  | Dang | 14h |
| 118 | 1.3.10.4 | Develop interfaces | 7d | 2011-12-01 09:00 | 2011-12-16 16:00 | 113 |  |  |  | 2011-10-01 08:00 | 2011-10-02 11:25 | 13.75d | 9.31d | start no earlier than 2011-11-29 08:00 |  | Nhung | 56h |
| 119 | 1.3.10.5 | Upadate interfaces | 7d | 2011-12-31 13:30 | 2012-01-17 17:00 | 118 |  |  |  |  |  | 4.44d |  | finish no earlier than 2012-01-17 17:00 |  | Dang | 56h |
| 120 | 1.4 | Update Plan | 1d | 2012-01-24 14:30 | 2012-01-26 14:00 | 103, 104 |  |  |  |  |  | 62.75d | 10.38d |  |  | Nhung | 8h |
| 121 | 1.5 | **Architect Design Analysis** | 60.75d | 2011-11-04 14:00 | 2012-02-11 15:00 | 76 | 2011-10-24 08:00 | 2011-12-25 17:00 | 63d? | 2011-10-15 08:00 | 2011-12-29 17:00 | 3.44d | 0d |  |  |  | 688h |
| 122 | 1.5.1 | **Develop architecture driver document (ADD)** | 46.75d | 2011-11-04 14:00 | 2012-01-20 14:00 |  | 2011-12-25 17:00 | 2011-12-25 17:00 | 0d? | 2011-10-15 08:00 | 2011-12-25 17:00 | 3.44d | 0d |  |  |  | 528h |
| 123 | 1.5.1.1 | Discover architecture drivers | 10d | 2011-11-04 14:00 | 2011-11-26 15:00 |  | 2011-10-24 08:00 | 2011-11-03 17:00 | 11d | 2011-10-15 08:00 | 2011-10-17 17:00 | 3.44d | 0d |  |  | Tan; Tuong | 160h |
| 124 | 1.5.1.2 | Document ADD(Draft version) | 10d | 2011-11-26 15:00 | 2011-12-21 14:30 | 123 | 2011-11-04 08:00 | 2011-11-05 17:00 | 2d | 2011-10-17 08:00 | 2011-10-22 17:00 | 3.44d | 0d |  |  | Tan; Tuong | 160h |
| 125 | 1.5.1.3 | Review | 3d | 2011-12-21 14:30 | 2011-12-28 14:30 | 124 | 2011-11-06 08:00 | 2011-11-06 17:00 | 1d | 2011-10-22 08:00 | 2011-10-24 17:00 | 3.44d | 0d |  |  | Tan; Tuong | 48h |
| 126 | 1.5.1.4 | Document ADD(Final version) | 10d | 2011-12-28 14:30 | 2012-01-20 14:00 | 125 |  |  |  |  |  | 3.44d |  |  |  | Tan; Tuong | 160h |
| 127 | 1.5.2 | **Develop architecture design** | 14d | 2012-01-20 14:00 | 2012-02-11 15:00 |  | 2011-11-13 08:00 | 2011-11-13 17:00 | 1d | 2011-10-23 08:00 | 2011-12-29 17:00 | 3.44d |  |  |  |  | 160h |
| 128 | 1.5.2.1 | Research about new pattern | 2d | 2012-01-20 14:00 | 2012-01-25 14:30 | 122 | 2011-11-14 08:00 | 2011-12-05 17:00 | 22d | 2011-10-23 08:00 | 2011-11-01 17:00 | 3.44d | 0d | finish no earlier than 2011-11-13 17:00 |  | Tan; Tuong | 32h |
| 129 | 1.5.2.2 | Document AD (Draft version) | 5d | 2012-01-25 14:30 | 2012-02-04 15:00 | 128 | 2011-12-06 08:00 | 2011-12-06 17:00 | 1d | 2011-11-02 08:00 | 2011-11-16 17:00 | 3.44d | 0d |  |  | Tan; Tuong | 80h |
| 130 | 1.5.2.3 | Review | 1d | 2012-02-04 15:00 | 2012-02-08 14:30 | 129 | 2011-12-07 08:00 | 2011-12-10 17:00 | 4d | 2011-11-16 08:00 | 2011-11-18 17:00 | 3.44d | 0d | finish no earlier than 2011-11-20 17:00 |  | Tan; Tuong | 16h |
| 131 | 1.5.2.4 | Document AD (Final version) | 2d | 2012-02-08 14:30 | 2012-02-11 15:00 | 130 | 2011-12-12 08:00 | 2011-12-13 17:00 | 2d | 2011-12-19 08:00 | 2011-12-24 17:00 | 3.44d |  | finish no earlier than 2011-12-31 17:00 |  | Tan; Tuong | 32h |
| 132 | 1.6 | Design Database | 7d | 2012-02-11 15:00 | 2012-02-29 14:30 | 121 | 2011-12-14 08:00 | 2011-12-24 17:00 | 11d | 2011-11-17 08:00 | 2011-12-29 17:00 | 6.12d |  |  |  | Tuong | 56h |
| 133 | 1.7 | Update Plan | 1d? | 2012-02-11 15:00 | 2012-02-15 14:30 | 121, 120 |  |  |  |  |  | 52.12d |  |  |  | Nhung | 8h |
| 134 | 1.8 | **Testing** | 25.5d | 2012-01-24 14:30 | 2012-03-03 10:30 | 28 |  |  |  |  |  | 1d |  |  | HRM_hk2.0 |  | 136h |
| 135 | 1.8.1 | **Design test case** | 25.5d | 2012-01-24 14:30 | 2012-03-03 10:30 |  |  |  |  |  |  | 1d |  |  | HRM_hk2.0 |  | 136h |
| 136 | 1.8.1.1 | Acceptance test case | 10d | 2012-01-24 14:30 | 2012-02-17 08:30 | 28 |  |  |  |  |  | 1d | 0d |  | HRM_hk2.0 | Tung | 80h |
| 137 | 1.8.1.2 | System test case | 7d | 2012-02-17 08:30 | 2012-03-03 10:30 | 121, 136 |  |  |  |  |  | 1d | 0.94d |  | HRM_hk2.0 | Tung | 56h |

| ID | WBS | Task | Duration | Start | Finish | Predecessors | Baseline start | Baseline finish | Baseline duration | Baseline 1 start | Baseline 1 finish | Total slack | Free slack | Constraint | Calendar | Resources | Work |
| --- | --- | --- | --- | --- | --- | --- | --- | --- | --- | --- | --- | --- | --- | --- | --- | --- | --- |
| 138 | 1.9 | **Training Code** | 17.81d | 2011-11-03 15:30 | 2011-12-02 17:00 | 70 | 2012-03-04 08:00 | 2012-03-04 08:00 | 0d? | 2011-11-28 08:00 | 2011-12-29 17:00 | 0d |  |  |  |  | 149.21h |
| 139 | 1.9.1 | ID generate | 7d | 2011-11-03 15:30 | 2011-12-02 17:00 |  | 2012-04-04 17:00 | 2012-04-04 17:00 | 0d? | 2011-11-28 08:00 | 2011-12-15 17:00 | 0d |  | finish no earlier than 2011-12-02 17:00 |  | Dang; Loc; Nguyen; Nhung; Quyet; Tan [50%]; Tung; Tuong | 149.21h |
| 140 | 1.10 | Update use case in SRS | 15d | 2011-12-03 08:00 | 2011-12-17 17:00 | 113, 139 |  |  |  |  |  | 58.75d |  |  |  | Loc | 120h |
| 141 | 1.11 | **Manage Catalog** | 59.25d | 2011-12-03 08:00 | 2012-03-09 17:00 | 138 |  |  |  |  |  | 0d |  |  |  |  | 175h |
| 142 | 1.11.1 | Programming: Manage Catalog | 40d | 2011-12-03 08:00 | 2012-03-06 10:30 | 139 |  |  |  |  |  | 0d |  |  |  | Tan [50%] | 159h |
| 143 | 1.11.2 | Test Manage Catalog | 2d | 2012-03-06 10:30 | 2012-03-09 17:00 | 142, 137 |  |  |  |  |  | 0d |  |  |  | Tung | 16h |
| 144 | 1.12 | **Increment 1: Detail Information Management** | 14.25d? | 2012-03-10 08:00 | 2012-03-31 16:00 | 141, 138, 132 |  |  |  |  |  | 0d |  |  | HRM_hk2.0 |  | 146h |
| 145 | 1.12.1 | **Detail Information Management** | 7.25d | 2012-03-10 08:00 | 2012-03-21 14:00 |  |  |  |  |  |  | 0d |  |  | HRM_hk2.0 |  | 40h |
| 146 | 1.12.1.1 | Design Detail Information Management | 2d | 2012-03-10 08:00 | 2012-03-14 14:00 | 143 |  |  |  |  |  | 0d |  | start no earlier than 2012-02-13 08:00 | HRM_hk2.0 | Dang | 16h |
| 147 | 1.12.1.2 | Code Detail Information Management | 2d | 2012-03-14 14:00 | 2012-03-20 10:00 | 146 |  |  |  |  |  | 0d |  |  | HRM_hk2.0 | Tan | 16h |
| 148 | 1.12.1.3 | Test Detail Information Management | 1d | 2012-03-20 10:00 | 2012-03-21 14:00 | 147 |  |  |  |  |  | 0d |  |  | HRM_hk2.0 | Nguyen | 8h |
| 149 | 1.12.2 | **Employee Code Setting** | 2.38d | 2012-03-21 14:00 | 2012-03-24 15:00 |  |  |  |  |  |  | 3.5d | 0d |  | HRM_hk2.0 |  | 13h |
| 150 | 1.12.2.1 | Design Employee Code Setting | 0.12d | 2012-03-21 14:00 | 2012-03-21 15:00 | 145 |  |  |  |  |  | 3.5d | 0d |  | HRM_hk2.0 | Dang | 1h |
| 151 | 1.12.2.2 | Code Employee Code Setting | 1d | 2012-03-21 15:00 | 2012-03-24 09:00 | 147, 150 |  |  |  |  |  | 3.5d | 0d |  | HRM_hk2.0 | Tan | 8h |
| 152 | 1.12.2.3 | Test Employee Code Setting | 0.5d | 2012-03-24 09:00 | 2012-03-24 15:00 | 151 |  |  |  |  |  | 3.5d |  |  | HRM_hk2.0 | Nguyen | 4h |
| 153 | 1.12.3 | **Column Setting** | 2.38d? | 2012-03-23 10:00 | 2012-03-27 11:00 |  |  |  |  |  |  | 1d | 0d |  | HRM_hk2.0 |  | 13h |
| 154 | 1.12.3.1 | Design Column Setting | 0.12d? | 2012-03-23 10:00 | 2012-03-23 11:00 | 149SS+1d |  |  |  |  |  | 1d | 0d |  | HRM_hk2.0 | Dang | 1h |
| 155 | 1.12.3.2 | Code Column Setting | 1d? | 2012-03-23 13:00 | 2012-03-24 15:00 | 154 |  |  |  |  |  | 1d | 0d |  | HRM_hk2.0 | Tan | 8h |
| 156 | 1.12.3.3 | Test Column Setting | 0.5d? | 2012-03-24 15:00 | 2012-03-27 11:00 | 155 |  |  |  |  |  | 2.5d |  |  | HRM_hk2.0 | Nguyen | 4h |
| 157 | 1.12.4 | **Certificate Management** | 2.62d | 2012-03-24 10:00 | 2012-03-28 15:00 |  |  |  |  |  |  | 1.25d |  |  | HRM_hk2.0 |  | 13h |
| 158 | 1.12.4.1 | Design Certificate Management | 0.12d | 2012-03-24 10:00 | 2012-03-24 11:00 | 153SS+1d |  |  |  |  |  | 1.5d | 0d |  | HRM_hk2.0 | Dang | 1h |
| 159 | 1.12.4.2 | Code Certificate Management | 1d | 2012-03-24 15:00 | 2012-03-28 09:00 | 155, 158 |  |  |  |  |  | 1.25d | 0d |  | HRM_hk2.0 | Tan | 8h |
| 160 | 1.12.4.3 | Test Certificate Management | 0.5d | 2012-03-28 09:00 | 2012-03-28 15:00 | 159 |  |  |  |  |  | 1.25d |  |  | HRM_hk2.0 | Nguyen | 4h |
| 161 | 1.12.5 | **Supported People Management** | 2.38d? | 2012-03-21 14:00 | 2012-03-24 15:00 |  |  |  |  |  |  | 1.12d |  |  | HRM_hk2.0 |  | 13h |
| 162 | 1.12.5.1 | Design Supported People Management | 0.12d? | 2012-03-21 14:00 | 2012-03-21 15:00 | 145 |  |  |  |  |  | 1.12d | 0d |  | HRM_hk2.0 | Dang | 1h |
| 163 | 1.12.5.2 | Code Supported People Management | 1d? | 2012-03-21 15:00 | 2012-03-24 09:00 | 162 |  |  |  |  |  | 0.62d | 0d |  | HRM_hk2.0 | Nguyen | 8h |
| 164 | 1.12.5.3 | Test Supported People Management | 0.5d? | 2012-03-24 09:00 | 2012-03-24 15:00 | 163 |  |  |  |  |  | 1.12d | 0d |  | HRM_hk2.0 | Dang | 4h |

| ID | WBS | Task | Duration | Start | Finish | Predecessors | Total slack | Free slack | Calendar | Resources | Work |
| --- | --- | --- | --- | --- | --- | --- | --- | --- | --- | --- | --- |
| 165 | 1.12.6 | **Family Relationship Management** | 4.12d? | 2012-03-21 14:00 | 2012-03-28 09:00 |  | 1.75d | 1.56d | HRM_hk2.0 |  | 21h |
| 166 | 1.12.6.1 | Design Family Relationship Management | 0.12d | 2012-03-21 14:00 | 2012-03-21 15:00 | 145 | 2d | 0d | HRM_hk2.0 | Dang | 1h |
| 167 | 1.12.6.2 | Code Family Relationship Management | 2d | 2012-03-21 15:00 | 2012-03-27 11:00 | 166 | 2d | 0d | HRM_hk2.0 | Nhung | 16h |
| 168 | 1.12.6.3 | Test Family Relationship Management | 0.5d? | 2012-03-27 13:00 | 2012-03-28 09:00 | 167 | 1.75d |  | HRM_hk2.0 | Tung | 4h |
| 169 | 1.12.7 | **Staff History** | 2.38d? | 2012-03-24 15:00 | 2012-03-28 16:00 |  | 1.12d |  | HRM_hk2.0 |  | 13h |
| 170 | 1.12.7.1 | Design Staff History | 0.12d? | 2012-03-24 15:00 | 2012-03-24 16:00 | 164 | 1.12d | 0.25d | HRM_hk2.0 | Dang | 1h |
| 171 | 1.12.7.2 | Code Staff History | 1d? | 2012-03-27 08:00 | 2012-03-28 10:00 | 170 | 0.62d | 0d | HRM_hk2.0 | Nguyen | 8h |
| 172 | 1.12.7.3 | Test Staff History | 0.5d? | 2012-03-28 10:00 | 2012-03-28 16:00 | 171 | 1.12d |  | HRM_hk2.0 | Dang | 4h |
| 173 | 1.12.8 | Integrate | 0.5d | 2012-03-30 08:00 | 2012-03-30 14:00 | 145, 149, 153, 157, 161, 165, 169 | 0.62d | 0d | HRM_hk2.0 | Tan; Nguyen; Nhung | 12h |
| 174 | 1.12.9 | Testing | 1d | 2012-03-30 14:00 | 2012-03-31 16:00 | 173 | 0.88d |  | HRM_hk2.0 | Tung; Nguyen [50%] | 8h |
| 175 | 1.13 | **Increment 2: Training Management** | 13.62d? | 2012-03-24 10:00 | 2012-04-14 11:00 | 145, 140 | 0d |  | HRM_hk2.0 |  | 380h |
| 176 | 1.13.1 | **Reward Management** | 2.38d? | 2012-03-24 10:00 | 2012-03-28 11:00 |  | 0.38d | 0d | HRM_hk2.0 |  | 13h |
| 177 | 1.13.1.1 | Design Reward Management | 0.12d? | 2012-03-24 10:00 | 2012-03-24 11:00 | 145FS+2d | 0.38d | 0d | HRM_hk2.0 | Dang | 1h |
| 178 | 1.13.1.2 | Code Reward Management | 1d? | 2012-03-24 13:00 | 2012-03-27 15:00 | 177 | 0.62d | 0d | HRM_hk2.0 | Tuong | 8h |
| 179 | 1.13.1.3 | Test Reward Management | 0.5d? | 2012-03-27 15:00 | 2012-03-28 11:00 | 178 | 0.38d |  | HRM_hk2.0 | Loc | 4h |
| 180 | 1.13.2 | **Staff Internship Management** | 2.38d? | 2012-03-24 10:00 | 2012-03-28 11:00 |  | 3.88d | 0d | HRM_hk2.0 |  | 13h |
| 181 | 1.13.2.1 | Design Staff Internship Management | 0.12d? | 2012-03-24 10:00 | 2012-03-24 11:00 | 145FS+2d | 3.88d | 0d | HRM_hk2.0 | Dang | 1h |
| 182 | 1.13.2.2 | Code Staff Internship Management | 1d? | 2012-03-24 13:00 | 2012-03-27 15:00 | 181 | 4.12d | 0d | HRM_hk2.0 | Loc | 8h |
| 183 | 1.13.2.3 | Test Staff Internship Management | 0.5d? | 2012-03-27 15:00 | 2012-03-28 11:00 | 182 | 3.88d |  | HRM_hk2.0 | Nhung | 4h |
| 184 | 1.13.3 | **Training Result Management** | 2.38d? | 2012-03-24 10:00 | 2012-03-28 11:00 |  | 0d |  | HRM_hk2.0 |  | 13h |
| 185 | 1.13.3.1 | Design Training Result Management | 0.12d? | 2012-03-24 10:00 | 2012-03-24 11:00 | 145FS+2d | 0d |  | HRM_hk2.0 | Dang | 1h |
| 186 | 1.13.3.2 | Code Training Result Management | 1d? | 2012-03-24 13:00 | 2012-03-27 15:00 | 185 | 0d |  | HRM_hk2.0 | Quyet | 8h |
| 187 | 1.13.3.3 | Test Training Result Management | 0.5d? | 2012-03-27 15:00 | 2012-03-28 11:00 | 186 | 0d |  | HRM_hk2.0 | Tuong | 4h |
| 188 | 1.13.4 | **Facilitate Management** | 2.38d? | 2012-03-24 13:00 | 2012-03-28 14:00 |  | 1.5d | 0d | HRM_hk2.0 |  | 13h |
| 189 | 1.13.4.1 | Design Facilitate Management | 0.12d? | 2012-03-24 13:00 | 2012-03-24 14:00 | 158 | 1.5d | 0d | HRM_hk2.0 | Dang | 1h |
| 190 | 1.13.4.2 | Code Facilitate Management | 1d? | 2012-03-24 14:00 | 2012-03-27 16:00 | 189 | 1.75d | 0.25d | HRM_hk2.0 | Dang | 8h |
| 191 | 1.13.4.3 | Test Facilitate Management | 0.5d? | 2012-03-28 08:00 | 2012-03-28 14:00 | 190 | 1.5d |  | HRM_hk2.0 | Tuong | 4h |

| ID | WBS | Task | Duration | Start | Finish | Predecessors | Total slack | Free slack | Constraint | Calendar | Resources | Work |
| --- | --- | --- | --- | --- | --- | --- | --- | --- | --- | --- | --- | --- |
| 192 | 1.13.5 | **Union Management** | 2.38d? | 2012-04-03 08:00 | 2012-04-06 09:00 |  | 3.38d | 0d |  | HRM_hk2.0 |  | 13h |
| 193 | 1.13.5.1 | Design Union Management | 0.12d? | 2012-04-03 08:00 | 2012-04-03 09:00 | 144 | 3.38d | 0d |  | HRM_hk2.0 | Dang | 1h |
| 194 | 1.13.5.2 | Code Union Management | 1d? | 2012-04-03 09:00 | 2012-04-04 11:00 | 193 | 3.38d | 0d |  | HRM_hk2.0 | Tung | 8h |
| 195 | 1.13.5.3 | Test Union Management | 0.5d? | 2012-04-04 13:00 | 2012-04-06 09:00 | 194 | 3.38d |  |  | HRM_hk2.0 | Nhung | 4h |
| 196 | 1.13.6 | **Task NoteBook Management** | 2.38d? | 2012-04-03 08:00 | 2012-04-06 09:00 |  | 1d | 0d |  | HRM_hk2.0 |  | 13h |
| 197 | 1.13.6.1 | Design Task Note Book Management | 0.12d? | 2012-04-03 08:00 | 2012-04-03 09:00 | 144 | 1d | 0d |  | HRM_hk2.0 | Dang | 1h |
| 198 | 1.13.6.2 | Code Task Note Book Management | 1d? | 2012-04-03 09:00 | 2012-04-04 11:00 | 197 | 1d | 0d |  | HRM_hk2.0 | Nhung | 8h |
| 199 | 1.13.6.3 | Test Task Note Book Management | 0.5d? | 2012-04-04 13:00 | 2012-04-06 09:00 | 198 | 1d |  |  | HRM_hk2.0 | Tung | 4h |
| 200 | 1.13.7 | **Training Course Management** | 2.38d | 2012-04-06 09:00 | 2012-04-10 10:00 |  | 1d | 0d |  | HRM_hk2.0 |  | 13h |
| 201 | 1.13.7.1 | Design Training Course Management | 0.12d | 2012-04-06 09:00 | 2012-04-06 10:00 | 196 | 1d | 0d | start no earlier than 2012-02-28 08:00 | HRM_hk2.0 | Dang | 1h |
| 202 | 1.13.7.2 | Code Training Course Management | 1d | 2012-04-06 10:00 | 2012-04-07 14:00 | 201 | 1d | 0d |  | HRM_hk2.0 | Nhung | 8h |
| 203 | 1.13.7.3 | Test Training Course Management | 0.5d | 2012-04-07 14:00 | 2012-04-10 10:00 | 202 | 1d |  |  | HRM_hk2.0 | Quyet | 4h |
| 204 | 1.13.8 | **Internal Training Management** | 2.38d? | 2012-04-03 14:00 | 2012-04-06 15:00 |  | 1.12d | 0d |  | HRM_hk2.0 |  | 13h |
| 205 | 1.13.8.1 | Design Internal Training Management | 0.12d? | 2012-04-03 14:00 | 2012-04-03 15:00 | 144FS+1d | 1.12d | 0d |  | HRM_hk2.0 | Dang | 1h |
| 206 | 1.13.8.2 | Code Internal Training Management | 1d? | 2012-04-03 15:00 | 2012-04-06 09:00 | 205 | 1.12d | 0d |  | HRM_hk2.0 | Nguyen | 8h |
| 207 | 1.13.8.3 | Test Internal Training Management | 0.5d? | 2012-04-06 09:00 | 2012-04-06 15:00 | 206 | 1.12d |  |  | HRM_hk2.0 | Quyet | 4h |
| 208 | 1.13.9 | **Emulation Management** | 2.38d? | 2012-04-06 15:00 | 2012-04-10 16:00 |  | 1.62d |  |  | HRM_hk2.0 |  | 13h |
| 209 | 1.13.9.1 | Design Emulation Management | 0.12d? | 2012-04-06 15:00 | 2012-04-06 16:00 | 204 | 1.62d | 0.38d |  | HRM_hk2.0 | Dang | 1h |
| 210 | 1.13.9.2 | Code Emulation Management | 1d? | 2012-04-07 08:00 | 2012-04-10 10:00 | 209 | 1.12d | 0d |  | HRM_hk2.0 | Nguyen | 8h |
| 211 | 1.13.9.3 | Test Emulation Management | 0.5d? | 2012-04-10 10:00 | 2012-04-10 16:00 | 210 | 1.12d |  |  | HRM_hk2.0 | Dang | 4h |
| 212 | 1.13.10 | **Lecture Probation Management** | 2.38d? | 2012-04-10 10:00 | 2012-04-13 11:00 |  | 1d |  |  | HRM_hk2.0 |  | 13h |
| 213 | 1.13.10.1 | Design Lecture Probation Management | 0.12d? | 2012-04-10 10:00 | 2012-04-10 11:00 | 200 | 1d | 0d |  | HRM_hk2.0 | Dang | 1h |
| 214 | 1.13.10.2 | Code Lecture Probation Management | 1d? | 2012-04-10 13:00 | 2012-04-11 15:00 | 213 | 1d | 0d |  | HRM_hk2.0 | Nhung | 8h |
| 215 | 1.13.10.3 | Test Lecture Probation Management | 0.5d? | 2012-04-11 15:00 | 2012-04-13 11:00 | 214 | 1d |  |  | HRM_hk2.0 | Tung | 4h |

| ID | WBS | Task | Duration | Start | Finish | Predecessors | Total slack | Free slack | Calendar | Resources | Work |
| --- | --- | --- | --- | --- | --- | --- | --- | --- | --- | --- | --- |
| 216 | 1.13.11 | **Mobilization Management** | 2.38d? | 2012-03-28 13:00 | 2012-03-31 14:00 |  | 4.12d | 0d | HRM_hk2.0 |  | 13h |
| 217 | 1.13.11.1 | Design Mobilization Management | 0.12d? | 2012-03-28 13:00 | 2012-03-28 14:00 | 180 | 4.12d | 0d | HRM_hk2.0 | Dang | 1h |
| 218 | 1.13.11.2 | Code Mobilization Management | 1d? | 2012-03-28 14:00 | 2012-03-30 16:00 | 217 | 4.12d | 0.38d | HRM_hk2.0 | Loc | 8h |
| 219 | 1.13.11.3 | Test Mobilization Management | 0.5d? | 2012-03-31 08:00 | 2012-03-31 14:00 | 218 | 3.88d |  | HRM_hk2.0 | Nhung | 4h |
| 220 | 1.13.12 | **Penalty Management** | 2.38d? | 2012-03-30 09:00 | 2012-04-03 10:00 |  | 0.88d | 0d | HRM_hk2.0 |  | 13h |
| 221 | 1.13.12.1 | Design Penalty Management | 0.12d? | 2012-03-30 09:00 | 2012-03-30 10:00 | 176FS+1d | 0.88d | 0d | HRM_hk2.0 | Dang | 1h |
| 222 | 1.13.12.2 | Code Penalty Management | 1d? | 2012-03-30 10:00 | 2012-03-31 14:00 | 221 | 0.88d | 0d | HRM_hk2.0 | Tuong | 8h |
| 223 | 1.13.12.3 | Test Penalty Management | 0.5d? | 2012-03-31 14:00 | 2012-04-03 10:00 | 222 | 0.88d |  | HRM_hk2.0 | Loc | 4h |
| 224 | 1.13.13 | **Lecture Position Management** | 2.38d? | 2012-04-03 10:00 | 2012-04-06 11:00 | 220 | 0.88d | 0d | HRM_hk2.0 |  | 13h |
| 225 | 1.13.13.1 | Design Lecture Position Management | 0.12d? | 2012-04-03 10:00 | 2012-04-03 11:00 | 220 | 0.88d | 0d | HRM_hk2.0 | Dang | 1h |
| 226 | 1.13.13.2 | Code Lecture Position Management | 1d? | 2012-04-03 13:00 | 2012-04-04 15:00 | 225 | 0.88d | 0d | HRM_hk2.0 | Tuong | 8h |
| 227 | 1.13.13.3 | Test Lecture Position Management | 0.5d? | 2012-04-04 15:00 | 2012-04-06 11:00 | 226 | 0.88d |  | HRM_hk2.0 | Loc | 4h |
| 228 | 1.13.14 | **Communist Party Management** | 2.38d? | 2012-04-07 13:00 | 2012-04-11 14:00 |  | 0.88d |  | HRM_hk2.0 |  | 13h |
| 229 | 1.13.14.1 | Design Communist Party Management | 0.12d? | 2012-04-07 13:00 | 2012-04-07 14:00 | 224FS+1d | 0.88d | 0d | HRM_hk2.0 | Dang | 1h |
| 230 | 1.13.14.2 | Code Communist Party Management | 1d? | 2012-04-07 14:00 | 2012-04-10 16:00 | 229 | 0.62d | 0.25d | HRM_hk2.0 | Tuong | 8h |
| 231 | 1.13.14.3 | Test Communist Party Management | 0.5d? | 2012-04-11 08:00 | 2012-04-11 14:00 | 230 | 0.38d |  | HRM_hk2.0 | Loc | 4h |
| 232 | 1.13.15 | **Trade Union Management** | 2.38d? | 2012-04-06 09:00 | 2012-04-10 10:00 | 192 | 3.38d |  | HRM_hk2.0 |  | 13h |
| 233 | 1.13.15.1 | Design Trade Union Management | 0.12d? | 2012-04-06 09:00 | 2012-04-06 10:00 | 192 | 3.38d | 0d | HRM_hk2.0 | Dang | 1h |
| 234 | 1.13.15.2 | Code Trade Union Management | 1d? | 2012-04-06 10:00 | 2012-04-07 14:00 | 233 | 3.38d | 0d | HRM_hk2.0 | Tung | 8h |
| 235 | 1.13.15.3 | Test Trade Union Management | 0.5d? | 2012-04-07 14:00 | 2012-04-10 10:00 | 234 | 3.38d |  | HRM_hk2.0 | Nhung | 4h |
| 236 | 1.13.16 | **Syllabus Management** | 2.38d? | 2012-03-31 14:00 | 2012-04-04 15:00 |  | 4.12d | 0d | HRM_hk2.0 |  | 13h |
| 237 | 1.13.16.1 | Design Syllabus Management | 0.12d? | 2012-03-31 14:00 | 2012-03-31 15:00 | 216 | 4.12d | 0d | HRM_hk2.0 | Dang | 1h |
| 238 | 1.13.16.2 | Code Syllabus Management | 1d? | 2012-03-31 15:00 | 2012-04-04 09:00 | 237 | 3.88d | 0d | HRM_hk2.0 | Loc | 8h |
| 239 | 1.13.16.3 | Test Syllabus Management | 0.5d? | 2012-04-04 09:00 | 2012-04-04 15:00 | 238 | 3.88d |  | HRM_hk2.0 | Quyet | 4h |

| ID | WBS | Task | Duration | Start | Finish | Predecessors | Total slack | Free slack | Calendar | Resources | Work |
| --- | --- | --- | --- | --- | --- | --- | --- | --- | --- | --- | --- |
| 240 | 1.13.17 | **Science Research Management** | 2.38d? | 2012-04-04 15:00 | 2012-04-07 16:00 | 236 | 4.12d |  | HRM_hk2.0 |  | 13h |
| 241 | 1.13.17.1 | Design Science Research Management | 0.12d? | 2012-04-04 15:00 | 2012-04-04 16:00 | 236 | 4.12d | 1.25d | HRM_hk2.0 | Dang | 1h |
| 242 | 1.13.17.2 | Code Science Research Management | 1d? | 2012-04-06 08:00 | 2012-04-07 10:00 | 241 | 3.62d | 0d | HRM_hk2.0 | Loc | 8h |
| 243 | 1.13.17.3 | Test Science Research Management | 0.5d? | 2012-04-07 10:00 | 2012-04-07 16:00 | 242 | 3.88d |  | HRM_hk2.0 | Quyet | 4h |
| 244 | 1.13.18 | **Other Management** | 2.38d? | 2012-03-28 13:00 | 2012-03-31 14:00 |  | 0d |  | HRM_hk2.0 |  | 13h |
| 245 | 1.13.18.1 | Design Other Management | 0.12d? | 2012-03-28 13:00 | 2012-03-28 14:00 | 184 | 0d |  | HRM_hk2.0 | Dang | 1h |
| 246 | 1.13.18.2 | Code Other Management | 1d? | 2012-03-28 14:00 | 2012-03-30 16:00 | 245 | 0d |  | HRM_hk2.0 | Quyet | 8h |
| 247 | 1.13.18.3 | Test Other Management | 0.5d? | 2012-03-31 08:00 | 2012-03-31 14:00 | 246 | 0d |  | HRM_hk2.0 | Tan | 4h |
| 248 | 1.13.19 | **Work Management** | 2.38d? | 2012-03-31 14:00 | 2012-04-04 15:00 |  | 0d |  | HRM_hk2.0 |  | 13h |
| 249 | 1.13.19.1 | Design Work Management | 0.12d? | 2012-03-31 14:00 | 2012-03-31 15:00 | 244 | 0d |  | HRM_hk2.0 | Dang | 1h |
| 250 | 1.13.19.2 | Code Work Management | 1d? | 2012-03-31 15:00 | 2012-04-04 09:00 | 249 | 0d |  | HRM_hk2.0 | Quyet | 8h |
| 251 | 1.13.19.3 | Test Work Management | 0.5d? | 2012-04-04 09:00 | 2012-04-04 15:00 | 250 | 0d |  | HRM_hk2.0 | Tan | 4h |
| 252 | 1.13.20 | **Master Thesis Guideline Management** | 2.38d? | 2012-04-04 15:00 | 2012-04-07 16:00 |  | 0d |  | HRM_hk2.0 |  | 13h |
| 253 | 1.13.20.1 | Design Master Thesis Guideline Management | 0.12d? | 2012-04-04 15:00 | 2012-04-04 16:00 | 248 | 0d |  | HRM_hk2.0 | Dang | 1h |
| 254 | 1.13.20.2 | Code Master Thesis Guideline Management | 1d? | 2012-04-06 08:00 | 2012-04-07 10:00 | 253 | 0d |  | HRM_hk2.0 | Quyet | 8h |
| 255 | 1.13.20.3 | Test Master Thesis Guideline Management | 0.5d? | 2012-04-07 10:00 | 2012-04-07 16:00 | 254 | 0d |  | HRM_hk2.0 | Tan | 4h |
| 256 | 1.13.21 | **Article Management** | 2.38d? | 2012-04-10 08:00 | 2012-04-13 09:00 |  | 0d |  | HRM_hk2.0 |  | 13h |
| 257 | 1.13.21.1 | Design Article Management | 0.12d? | 2012-04-10 08:00 | 2012-04-10 09:00 | 252 | 0d |  | HRM_hk2.0 | Dang | 1h |
| 258 | 1.13.21.2 | Code Article Management | 1d? | 2012-04-10 09:00 | 2012-04-11 11:00 | 257 | 0d |  | HRM_hk2.0 | Quyet | 8h |
| 259 | 1.13.21.3 | Test Article Management | 0.5d? | 2012-04-11 13:00 | 2012-04-13 09:00 | 258 | 0d |  | HRM_hk2.0 | Tan | 4h |
| 260 | 1.13.22 | **Subject Management** | 2.38d? | 2012-03-28 14:00 | 2012-03-31 15:00 |  | 1.75d | 0d | HRM_hk2.0 |  | 13h |
| 261 | 1.13.22.1 | Design Subject Management | 0.12d? | 2012-03-28 14:00 | 2012-03-28 15:00 | 188 | 1.75d | 0d | HRM_hk2.0 | Dang | 1h |
| 262 | 1.13.22.2 | Code Subject Management | 1d? | 2012-03-28 15:00 | 2012-03-31 09:00 | 261 | 1.5d | 0d | HRM_hk2.0 | Dang | 8h |
| 263 | 1.13.22.3 | Test Subject Management | 0.5d? | 2012-03-31 09:00 | 2012-03-31 15:00 | 262 | 1.5d |  | HRM_hk2.0 | Tuong | 4h |

| ID | WBS | Task | Duration | Start | Finish | Predecessors | Total slack | Free slack | Constraint | Calendar | Resources | Work |
| --- | --- | --- | --- | --- | --- | --- | --- | --- | --- | --- | --- | --- |
| 264 | 1.13.23 | **Income Management** | 3.25d? | 2012-03-31 15:00 | 2012-04-06 11:00 |  | 1.25d | 0d |  | HRM_hk2.0 |  | 16h |
| 265 | 1.13.23.1 | Design Income Management | 0.5d? | 2012-03-31 15:00 | 2012-04-03 11:00 | 260 | 1.25d | 0d |  | HRM_hk2.0 | Dang | 4h |
| 266 | 1.13.23.2 | Code Income Management | 1d? | 2012-04-03 13:00 | 2012-04-04 15:00 | 265 | 1.25d | 0d |  | HRM_hk2.0 | Dang | 8h |
| 267 | 1.13.23.3 | Test Income Management | 0.5d? | 2012-04-04 15:00 | 2012-04-06 11:00 | 266 | 1.25d |  |  | HRM_hk2.0 | Tuong | 4h |
| 268 | 1.13.24 | **Salary Coefficient Management** | 2.5d? | 2012-04-06 13:00 | 2012-04-10 15:00 |  | 1.25d |  |  | HRM_hk2.0 |  | 14h |
| 269 | 1.13.24.1 | Design Salary Coefficient Management | 0.25d? | 2012-04-06 13:00 | 2012-04-06 15:00 | 264 | 1.25d | 0d |  | HRM_hk2.0 | Dang | 2h |
| 270 | 1.13.24.2 | Code Salary Coefficient Management | 1d? | 2012-04-06 15:00 | 2012-04-10 09:00 | 269 | 1.25d | 0d |  | HRM_hk2.0 | Dang | 8h |
| 271 | 1.13.24.3 | Test Salary Coefficient Management | 0.5d? | 2012-04-10 09:00 | 2012-04-10 15:00 | 270 | 1.25d |  |  | HRM_hk2.0 | Tuong | 4h |
| 272 | 1.13.25 | Integrate | 0.5d? | 2012-04-13 09:00 | 2012-04-13 15:00 | 165, 188, 208, 228, 256, 264, 268 | 0d |  |  | HRM_hk2.0 | Dang; Loc; Nguyen; Nhung; Quyet; Tan; Tung; Tuong | 32h |
| 273 | 1.13.26 | Testing | 0.5d? | 2012-04-13 15:00 | 2012-04-14 11:00 | 272 | 0d |  |  | HRM_hk2.0 | Tuong; Tung; Dang; Loc; Nguyen; Nhung; Quyet; Tan | 32h |
| 274 | 1.14 | **Increment 3: Report** | 10.5d | 2012-04-14 13:00 | 2012-05-01 15:00 | 144 | 0d |  |  | HRM_hk2.0 |  | 64h |
| 275 | 1.14.1 | **Report Management** | 7.75d | 2012-04-14 13:00 | 2012-04-27 09:00 |  | 0d |  |  | HRM_hk2.0 |  | 40h |
| 276 | 1.14.1.1 | Design Report | 1d | 2012-04-14 13:00 | 2012-04-17 15:00 | 175 | 0d |  |  | HRM_hk2.0 | Dang | 8h |
| 277 | 1.14.1.2 | Code Report | 3d | 2012-04-17 15:00 | 2012-04-24 15:00 | 259, 273, 276 | 0d |  |  | HRM_hk2.0 | Tan | 24h |
| 278 | 1.14.1.3 | Test Report | 1d | 2012-04-24 15:00 | 2012-04-27 09:00 | 277 | 0d |  |  | HRM_hk2.0 | Tung | 8h |
| 279 | 1.14.2 | Integrate | 1d | 2012-04-27 09:00 | 2012-04-28 11:00 | 278 | 0d |  |  | HRM_hk2.0 | Tan | 8h |
| 280 | 1.14.3 | Test | 1d | 2012-04-28 13:00 | 2012-05-01 15:00 | 279 | 0d |  |  | HRM_hk2.0 | Dang; Tung | 16h |
| 281 | 1.15 | Conduct System test | 2d | 2012-05-01 15:00 | 2012-05-05 11:00 | 274 | 0d |  |  | HRM_hk2.0 | Dang; Loc; Nguyen; Nhung; Quyet; Tan; Tung; Tuong | 128h |
| 282 | 1.16 | Conduct Acceptance test | 2d | 2012-05-05 13:00 | 2012-05-11 09:00 | 281 | 0d |  |  | HRM_hk2.0 | Dang; Loc; Nguyen; Nhung; Quyet; Tan; Tung; Tuong | 128h |
| 283 | 1.17 | Translate Concept Doc | 26d | 2012-01-21 10:00 | 2012-03-22 14:00 | 87 | 30d |  |  |  | Nguyen | 208h |
| 284 | 1.18 | Reflection | 2d | 2012-05-11 09:00 | 2012-05-15 15:00 | 282, 283, 133 | 0d |  | finish no earlier than 2012-03-07 17:00 | HRM_hk2.0 | Dang; Loc; Nguyen; Nhung; Quyet; Tan; Tung; Tuong | 120h |
| 285 | 1.19 | Deliver to customer | 3d | 2012-05-15 15:00 | 2012-05-22 15:00 | 284 | 0d |  |  | HRM_hk2.0 | Dang; Loc; Nguyen; Nhung; Quyet; Tan; Tung; Tuong | 180h |
| 286 | 1.20 | Maintaining | 1d | 2012-05-22 15:00 | 2012-05-25 09:00 | 285 | 0d |  |  | HRM_hk2.0 | Dang; Loc; Nguyen; Nhung; Quyet; Tan; Tung; Tuong | 64h |
